# Proyecto de Implantación de plataforma tecnológica VIVE TV

Schedule from Planner, 2009-09-21 to 2009-11-03.
DEVEL C.A.

## Calendars

- Predeterminado: Mon-Fri 08:30-11:30, 13:00-14:00; Sat-Sun off.

## Schedule

| ID | WBS | Task | Start | Finish | Predecessors | Work |
| --- | --- | --- | --- | --- | --- | --- |
| 1 | 1 | **Plataforma virtualizada Xen** | 2009-09-21 | 2009-09-23 |  | 12h |
| 2 | 1.1 | Instalación de Servidores Debian | 2009-09-21 | 2009-09-21 |  | 4h |
| 3 | 1.2 | Instalación de Xen | 2009-09-22 | 2009-09-22 | 2 | 2h |
| 4 | 1.3 | Personalización de plataforma de VMs | 2009-09-22 | 2009-09-22 | 3 | 2h |
| 5 | 1.4 | Creación de las VMs | 2009-09-23 | 2009-09-23 | 4FS+1h | 4h |
| 6 | 2 | **openLDAP** | 2009-09-25 | 2009-09-29 |  | 12h |
| 7 | 2.1 | Definición de DIT de VIVE TV | 2009-09-25 | 2009-09-25 | 5FS+24h | 4h |
| 8 | 2.2 | LDAP autoritativo | 2009-09-28 | 2009-09-28 | 7 | 4h |
| 9 | 2.3 | Definición de la estructura organizativa VIVE | 2009-09-29 | 2009-09-29 | 8 | 4h |
| 10 | 3 | **Plataforma Base** | 2009-09-30 | 2009-10-06 |  | 20h |
| 11 | 3.1 | DNS Sobre LDAP | 2009-09-30 | 2009-10-01 | 9 | 8h |
| 12 | 3.2 | Definición de la red de VIVE TV | 2009-10-02 | 2009-10-02 | 11 | 2h |
| 13 | 3.3 | DHCP Sobre LDAP | 2009-10-02 | 2009-10-06 | 12 | 8h |
| 14 | 3.4 | Inventario de la red (OCS) | 2009-10-06 | 2009-10-06 | 13 | 2h |
| 15 | 4 | **Plataforma de autenticación** | 2009-10-07 | 2009-10-12 |  | 14h |
| 16 | 4.1 | Entidad base de autenticación | 2009-10-07 | 2009-10-07 | 14 | 4h |
| 17 | 4.2 | PAM sobre Linux (servidores) | 2009-10-08 | 2009-10-08 | 16 | 2h |
| 18 | 4.3 | Kerberos | 2009-10-08 | 2009-10-12 | 17 | 8h |
| 19 | 5 | **Samba Server** | 2009-10-12 | 2009-10-23 | 15 | 39h |
| 20 | 5.1 | Instalación de servidor Samba | 2009-10-12 | 2009-10-16 |  | 16h |
| 21 | 5.2 | Migración de directorio activo | 2009-10-16 | 2009-10-16 | 20 | 1h |
| 22 | 5.3 | Plataforma de autenticación Samba | 2009-10-16 | 2009-10-19 | 20 | 4h |
| 23 | 5.4 | Migración de cuentas de maquina | 2009-10-19 | 2009-10-19 | 22 | 2h |
| 24 | 5.5 | Migración de la red de máquinas de VIVE | 2009-10-19 | 2009-10-23 | 22 | 16h |

| ID | WBS | Task | Start | Finish | Predecessors | Work |
| --- | --- | --- | --- | --- | --- | --- |
| 25 | 6 | **Servidor de Impresión** | 2009-10-23 | 2009-10-27 | 19 | 10h |
| 26 | 6.1 | Servidor de impresión CUPS | 2009-10-23 | 2009-10-26 | 24 | 4h |
| 27 | 6.2 | Definición de políticas de uso de impresoras | 2009-10-26 | 2009-10-26 | 26 | 2h |
| 28 | 6.3 | Servicio pykota | 2009-10-26 | 2009-10-27 | 26 | 4h |
| 29 | 7 | **Servicio de correo electrónico** | 2009-10-23 | 2009-11-03 | 19 | 35h |
| 30 | 7.1 | Plataforma de buzones IMAP | 2009-10-23 | 2009-10-26 | 24 | 4h |
| 31 | 7.2 | Migración de buzones IMAP actuales | 2009-10-26 | 2009-10-27 | 30 | 4h |
| 32 | 7.3 | SMTP (postfix) | 2009-10-27 | 2009-10-28 | 31 | 4h |
| 33 | 7.4 | Servicios de antivirus, anti-spam y anti-uce | 2009-10-28 | 2009-10-28 | 32 | 2h |
| 34 | 7.5 | IMAP4 (Dovecot) | 2009-10-27 | 2009-10-27 | 31 | 2h |
| 35 | 7.6 | Servidor Web y Webmail (RoundCube) | 2009-10-28 | 2009-10-28 | 34 | 1h |
| 36 | 7.7 | Plan de migración de los usuarios | 2009-10-28 | 2009-11-03 | 35 | 18h |
| 37 | 8 | **Transferencia Tecnológica** | 2009-10-12 | 2009-11-02 |  | 36h |
| 38 | 8.1 | Gestión de plataforma base | 2009-10-12 | 2009-10-15 | 18 | 12h |
| 39 | 8.2 | Gestión de correo electrónico | 2009-10-28 | 2009-11-02 | 35 | 12h |
| 40 | 8.3 | Gestión de servidor Samba | 2009-10-27 | 2009-10-30 | 28 | 12h |
